# 双轨运行上线任务安排

Schedule from MS Project, 2015-08-15 to 2015-09-30.
Sunway Software

## Calendars

- 标准: Mon-Fri 08:00-12:00, 13:00-17:00; Sat-Sun off. Exceptions (off unless hours are given): 2015-08-15 08:00-12:00, 13:00-17:00, 2015-08-22 08:00-12:00, 13:00-17:00, 2015-08-29 08:00-12:00, 13:00-17:00, 2015-09-05 08:00-12:00, 13:00-17:00, 2015-09-12 08:00-12:00, 13:00-17:00, 2015-09-19 08:00-12:00, 13:00-17:00, 2015-09-26 08:00-12:00, 13:00-17:00.

## Resources

| Resource |
| --- |
| 高伟 |
| 浣定邦 |
| 那鹏 |
| 郇伟 |
| 卢月双 |

## Schedule

| ID | Task | Duration | Start | Finish | Predecessors | Total slack | Constraint | Resources | Work |
| --- | --- | --- | --- | --- | --- | --- | --- | --- | --- |
| 1 | 配置双轨环境 | 4h | 2015-08-15 08:00 | 2015-08-15 12:00 |  | 0d | start no earlier than 2015-08-15 08:00 | 高伟; 浣定邦 | 8h |
| 2 | 发布双轨测试系统v1.0 | 4h | 2015-08-15 13:00 | 2015-08-15 17:00 | 1 | 0d |  | 浣定邦 | 4h |
| 3 | 进行业务测试 | 4d | 2015-08-17 08:00 | 2015-08-20 17:00 | 2 | 0d |  | 高伟; 浣定邦 | 64h |
| 4 | 汇总本周测试问题 | 4h | 2015-08-21 08:00 | 2015-08-21 12:00 | 3 | 0d |  | 浣定邦 | 4h |
| 5 | 与客户确认功能点 | 4h | 2015-08-21 13:00 | 2015-08-21 17:00 | 4 | 0d |  | 高伟 | 4h |
| 6 | 修改测试问题 | 5d | 2015-08-17 08:00 | 2015-08-21 17:00 | 2 | 0d |  | 卢月双; 那鹏; 郇伟 | 120h |
| 7 | 确定修改影响范围 | 4h | 2015-08-22 08:00 | 2015-08-22 12:00 | 5, 6 | 0d |  | 高伟; 郇伟 | 8h |
| 8 | 例行版本发布 v1.1 | 4h | 2015-08-22 13:00 | 2015-08-22 17:00 | 7 | 0d |  | 浣定邦 | 4h |
| 9 | 进行业务测试 | 4d | 2015-08-24 08:00 | 2015-08-27 17:00 | 8 | 0d |  | 高伟; 浣定邦 | 64h |
| 10 | 汇总本周测试问题 | 4h | 2015-08-28 08:00 | 2015-08-28 12:00 | 9 | 0d |  | 浣定邦 | 4h |
| 11 | 与客户确认功能点 | 4h | 2015-08-28 13:00 | 2015-08-28 17:00 | 10 | 0d |  | 高伟 | 4h |
| 12 | 修改测试问题 | 5d | 2015-08-24 08:00 | 2015-08-28 17:00 | 8 | 0d |  | 卢月双; 那鹏; 郇伟 | 120h |
| 13 | 确定修改影响范围 | 4h | 2015-08-29 08:00 | 2015-08-29 12:00 | 11, 12 | 0d |  | 高伟; 郇伟 | 8h |
| 14 | 例行版本发布 v1.2 | 4h | 2015-08-29 13:00 | 2015-08-29 17:00 | 13 | 0d |  | 浣定邦 | 4h |
| 15 | 进行业务测试 | 4d | 2015-08-31 08:00 | 2015-09-03 17:00 | 14 | 0d |  | 高伟; 浣定邦 | 64h |
| 16 | 汇总本周测试问题 | 4h | 2015-09-04 08:00 | 2015-09-04 12:00 | 15 | 0d |  | 浣定邦 | 4h |
| 17 | 与客户确认功能点 | 4h | 2015-09-04 13:00 | 2015-09-04 17:00 | 16 | 0d |  | 高伟 | 4h |
| 18 | 修改测试问题 | 5d | 2015-08-31 08:00 | 2015-09-04 17:00 | 14 | 0d |  | 卢月双; 那鹏; 郇伟 | 120h |
| 19 | 确定修改影响范围 | 4h | 2015-09-05 08:00 | 2015-09-05 12:00 | 17, 18 | 0d |  | 高伟; 郇伟 | 8h |
| 20 | 例行版本发布 v1.3 | 4h | 2015-09-05 13:00 | 2015-09-05 17:00 | 19 | 0d |  | 浣定邦 | 4h |
| 21 | 进行业务测试 | 4d | 2015-09-07 08:00 | 2015-09-10 17:00 | 20 | 0d |  | 高伟; 浣定邦 | 64h |
| 22 | 汇总本周测试问题 | 4h | 2015-09-11 08:00 | 2015-09-11 12:00 | 21 | 0d |  | 浣定邦 | 4h |
| 23 | 与客户确认功能点 | 4h | 2015-09-11 13:00 | 2015-09-11 17:00 | 22 | 0d |  | 高伟 | 4h |
| 24 | 修改测试问题 | 5d | 2015-09-07 08:00 | 2015-09-11 17:00 | 20 | 0d |  | 卢月双; 那鹏; 郇伟 | 120h |
| 25 | 确定修改影响范围 | 4h | 2015-09-12 08:00 | 2015-09-12 12:00 | 23, 24 | 0d |  | 高伟; 郇伟 | 8h |
| 26 | 例行版本发布 v1.4 | 4h | 2015-09-12 13:00 | 2015-09-12 17:00 | 25 | 0d |  | 浣定邦 | 4h |
| 27 | 进行业务测试 | 4d | 2015-09-14 08:00 | 2015-09-17 17:00 | 26 | 0d |  | 高伟; 浣定邦 | 64h |
| 28 | 汇总本周测试问题 | 4h | 2015-09-18 08:00 | 2015-09-18 12:00 | 27 | 0d |  | 浣定邦 | 4h |
| 29 | 与客户确认功能点 | 4h | 2015-09-18 13:00 | 2015-09-18 17:00 | 28 | 0d |  | 高伟 | 4h |
| 30 | 修改测试问题 | 5d | 2015-09-14 08:00 | 2015-09-18 17:00 | 26 | 0d |  | 卢月双; 那鹏; 郇伟 | 120h |
| 31 | 确定修改影响范围 | 4h | 2015-09-19 08:00 | 2015-09-19 12:00 | 29, 30 | 0d |  | 高伟; 郇伟 | 8h |
| 32 | 例行版本发布 v1.5 | 4h | 2015-09-19 13:00 | 2015-09-19 17:00 | 31 | 0d |  | 浣定邦 | 4h |
| 33 | 进行业务测试 | 4d | 2015-09-21 08:00 | 2015-09-24 17:00 | 32 | 0d |  | 高伟; 浣定邦 | 64h |
| 34 | 汇总本周测试问题 | 4h | 2015-09-25 08:00 | 2015-09-25 12:00 | 33 | 0d |  | 浣定邦 | 4h |
| 35 | 与客户确认功能点 | 4h | 2015-09-25 13:00 | 2015-09-25 17:00 | 34 | 0d |  | 高伟 | 4h |
| 36 | 修改测试问题 | 5d | 2015-09-21 08:00 | 2015-09-25 17:00 | 32 | 0d |  | 卢月双; 那鹏; 郇伟 | 120h |
| 37 | 确定修改影响范围 | 4h | 2015-09-26 08:00 | 2015-09-26 12:00 | 35, 36 | 0d |  | 高伟; 郇伟 | 8h |
| 38 | 发布单轨预览版 | 4h | 2015-09-26 13:00 | 2015-09-26 17:00 | 37 | 0d |  | 浣定邦 | 4h |
| 39 | 初始双轨系统环境 | 1d | 2015-09-28 08:00 | 2015-09-28 17:00 | 38 | 0d |  | 高伟; 浣定邦 | 16h |
| 40 | 发布单轨系统正式版 | 1d | 2015-09-29 08:00 | 2015-09-29 17:00 | 39 | 0d |  | 高伟; 浣定邦 | 16h |
| 41 | 切换为单轨运行 | 1d | 2015-09-30 08:00 | 2015-09-30 17:00 | 40 | 0d |  | 高伟; 浣定邦 | 16h |
