# 湖南存量房交易价格评估系统与金三对接实施计划

Schedule from MS Project, 2015-06-17 to 2015-10-07.

## Calendars

- 标准: Mon-Fri 08:00-12:00, 13:00-17:00; Sat-Sun off. Exceptions (off unless hours are given): 2015-07-04 to 2015-07-05 08:00-12:00, 13:00-17:00, 2015-07-26 08:00-12:00, 13:00-17:00, 2015-08-01 08:00-12:00, 13:00-17:00.

## Resources

| Resource |
| --- |
| 管理人员 |
| 项目经理 |
| 分析人员 |
| 开发人员 |
| 测试人员 |
| 培训人员 |
| 技术联络人员 |
| 部署小组 |

## Schedule

| ID | WBS | Task | Type | Duration | Start | Finish | Predecessors | Total slack | Constraint | Resources | Work |
| --- | --- | --- | --- | --- | --- | --- | --- | --- | --- | --- | --- |
| 1 | 1 | **项目范围规划** |  | 6d | 2015-06-17 | 2015-06-24 |  |  |  |  | 48h |
| 2 | 1.1 | 确定项目范围 |  | 1d | 2015-06-17 | 2015-06-17 |  | 0d |  | 管理人员 | 8h |
| 3 | 1.2 | 获得项目所需资金 |  | 1d | 2015-06-18 | 2015-06-18 | 2 | 0d |  | 管理人员 | 8h |
| 4 | 1.3 | 定义预备资源 |  | 2d | 2015-06-19 | 2015-06-22 | 3 | 0d |  | 项目经理 | 16h |
| 5 | 1.4 | 获得核心资源 |  | 2d | 2015-06-23 | 2015-06-24 | 4 | 0d |  | 项目经理 | 16h |
| 6 | 1.5 | 项目范围规划完成 | milestone | 0d | 2015-06-24 | 2015-06-24 | 5 | 0d |  |  |  |
| 7 | 2 | **分析/软件需求** |  | 7d | 2015-06-25 | 2015-07-03 |  |  |  |  | 64h |
| 8 | 2.1 | 行为需求分析 |  | 1d | 2015-06-25 | 2015-06-25 | 6 | 0d |  | 分析人员 | 8h |
| 9 | 2.2 | 起草初步的软件规范 |  | 1d | 2015-06-26 | 2015-06-26 | 8 | 0d |  | 分析人员 | 8h |
| 10 | 2.3 | 制定初步预算 |  | 1d | 2015-06-29 | 2015-06-29 | 9 | 0d |  | 项目经理 | 8h |
| 11 | 2.4 | 工作组共同审阅软件规范/预算 |  | 4h | 2015-06-30 | 2015-06-30 | 10 | 0d |  | 项目经理; 分析人员 | 8h |
| 12 | 2.5 | 根据反馈修改软件规范 |  | 1d | 2015-06-30 | 2015-07-01 | 11 | 0d |  | 分析人员 | 8h |
| 13 | 2.6 | 确定交付期限 |  | 1d | 2015-07-01 | 2015-07-02 | 12 | 0d |  | 项目经理 | 8h |
| 14 | 2.7 | 获得开展后续工作的批准(概念、期限和预算) |  | 4h | 2015-07-02 | 2015-07-02 | 13 | 0d |  | 管理人员; 项目经理 | 8h |
| 15 | 2.8 | 获得所需资源 |  | 1d | 2015-07-03 | 2015-07-03 | 14 | 0d |  | 项目经理 | 8h |
| 16 | 2.9 | 分析工作完成 | milestone | 0d | 2015-07-03 | 2015-07-03 | 15 | 0d |  |  |  |
| 17 | 3 | **设计** |  | 2d | 2015-07-04 | 2015-07-05 |  |  |  |  | 18h |
| 18 | 3.1 | 审阅初步的软件规范 |  | 1h | 2015-07-04 | 2015-07-04 | 16 | 0d | start no earlier than 2015-07-04 | 分析人员 | 1h |
| 19 | 3.2 | 制定功能规范 |  | 2h | 2015-07-04 | 2015-07-04 | 18 | 0d |  | 分析人员 | 2h |
| 20 | 3.3 | 根据功能规范开发原型 |  | 6h | 2015-07-04 | 2015-07-05 | 19 | 0d | start no earlier than 2015-07-04 | 分析人员 | 6h |
| 21 | 3.4 | 审阅功能规范 |  | 1h | 2015-07-05 | 2015-07-05 | 20 | 0d | start no earlier than 2015-07-05 | 管理人员 | 1h |
| 22 | 3.5 | 根据反馈修改功能规范 |  | 4h | 2015-07-05 | 2015-07-05 | 21 | 0d |  | 管理人员 | 4h |
| 23 | 3.6 | 获得开展后续工作的批准 |  | 2h | 2015-07-05 | 2015-07-05 | 22 | 0d |  | 管理人员; 项目经理 | 4h |
| 24 | 3.7 | 设计工作完成 | milestone | 0d | 2015-07-05 | 2015-07-05 | 23 | 0d |  |  |  |

| ID | WBS | Task | Type | Duration | Start | Finish | Predecessors | Total slack | Free slack | Constraint | Resources | Work |
| --- | --- | --- | --- | --- | --- | --- | --- | --- | --- | --- | --- | --- |
| 25 | 4 | **开发** |  | 16d | 2015-07-06 | 2015-07-26 |  |  |  |  |  | 128h |
| 26 | 4.1 | 审阅功能规范 |  | 4h | 2015-07-06 | 2015-07-06 | 24 | 6.25d | 0d |  | 开发人员 | 4h |
| 27 | 4.2 | 确定模块化/分层设计参数 |  | 1d | 2015-07-06 | 2015-07-07 | 26 | 6.25d | 0d |  | 开发人员 | 8h |
| 28 | 4.3 | 分派任务给开发人员 |  | 4h | 2015-07-07 | 2015-07-07 | 27 | 6.25d | 0d |  | 开发人员 | 4h |
| 29 | 4.4 | 编写代码 |  | 7d | 2015-07-08 | 2015-07-16 | 28 | 6.25d | 5.25d |  | 开发人员 | 56h |
| 30 | 4.5 | 开发人员测试(初步调试) |  | 7d | 2015-07-17 | 2015-07-26 | 29FS-7.5% | 1d | 0d | start no earlier than 2015-07-17 | 开发人员 | 56h |
| 31 | 4.6 | 开发工作完毕 | milestone | 0d | 2015-07-26 | 2015-07-26 | 30 | 1d |  | finish no earlier than 2015-07-26 |  |  |
| 32 | 5 | **测试** |  | 27d | 2015-07-27 | 2015-08-31 |  |  |  |  |  | 216h |
| 33 | 5.1 | 根据产品规范制定单元测试计划 |  | 4h | 2015-07-27 | 2015-07-27 | 24 | 0.5d |  |  | 测试人员 | 4h |
| 34 | 5.2 | 根据产品规范制定整体测试计划 |  | 4h | 2015-07-27 | 2015-07-27 | 24 | 26.5d |  |  | 测试人员 | 4h |
| 35 | 5.3 | **单元测试** |  | 4d | 2015-07-28 | 2015-07-31 |  |  |  |  |  | 32h |
| 36 | 5.3.1 | 审阅模块化代码 |  | 4h | 2015-07-28 | 2015-07-28 | 33, 31 | 0d |  |  | 测试人员 | 4h |
| 37 | 5.3.2 | 测试组件模块是否符合产品规范 |  | 4h | 2015-07-28 | 2015-07-28 | 31, 36 | 0d |  |  | 测试人员 | 4h |
| 38 | 5.3.3 | 找出不符合产品规范的异常情况 |  | 1d | 2015-07-29 | 2015-07-29 | 37 | 0d |  |  | 测试人员 | 8h |
| 39 | 5.3.4 | 修改代码 |  | 1d | 2015-07-30 | 2015-07-30 | 38 | 0d |  |  | 测试人员 | 8h |
| 40 | 5.3.5 | 重新测试经过修改的代码 |  | 1d | 2015-07-31 | 2015-07-31 | 39 | 0d |  |  | 测试人员 | 8h |
| 41 | 5.3.6 | 单元测试完成 | milestone | 0d | 2015-07-31 | 2015-07-31 | 40 | 0d |  |  |  |  |
| 42 | 5.4 | **整体测试** |  | 22d | 2015-08-01 | 2015-08-31 |  |  |  |  |  | 176h |
| 43 | 5.4.1 | 测试模块集成情况 |  | 7d | 2015-08-01 | 2015-08-10 | 41 | 2d | 0d | start no earlier than 2015-08-01 | 测试人员 | 56h |
| 44 | 5.4.2 | 找出不符合规范的异常情况 |  | 5d | 2015-08-11 | 2015-08-17 | 43 | 2d | 0d |  | 测试人员 | 40h |
| 45 | 5.4.3 | 修改代码 |  | 4d | 2015-08-18 | 2015-08-21 | 44 | 2d | 0d |  | 测试人员 | 32h |
| 46 | 5.4.4 | 重新测试经过修改的代码 |  | 6d | 2015-08-24 | 2015-08-31 | 45 | 2d | 0d | finish no earlier than 2015-08-31 | 测试人员 | 48h |
| 47 | 5.4.5 | 整体测试完成 | milestone | 0d | 2015-08-31 | 2015-08-31 | 46 | 2d |  | finish no earlier than 2015-08-31 |  |  |
| 48 | 6 | **试生产** |  | 22d | 2015-09-01 | 2015-09-30 |  |  |  |  |  | 176h |
| 49 | 6.1 | 确定测试群体 |  | 1d | 2015-09-01 | 2015-09-01 | 16 | 0d |  |  | 项目经理 | 8h |
| 50 | 6.2 | 确定软件分发机制 |  | 1d | 2015-09-02 | 2015-09-02 | 49 | 0d |  |  | 部署小组 | 8h |
| 51 | 6.3 | 安装/部署软件 |  | 1d | 2015-09-03 | 2015-09-03 | 47, 50 | 0d |  |  | 部署小组 | 8h |
| 52 | 6.4 | 获得用户反馈 |  | 11d | 2015-09-04 | 2015-09-18 | 51 | 0d |  |  | 部署小组 | 88h |
| 53 | 6.5 | 评估测试信息 |  | 8d | 2015-09-21 | 2015-09-30 | 52 | 0d |  | start no earlier than 2015-09-21 | 部署小组 | 64h |
| 54 | 6.6 | 试生产工作完成 | milestone | 0d | 2015-09-30 | 2015-09-30 | 53 | 0d |  |  |  |  |

| ID | WBS | Task | Type | Duration | Start | Finish | Predecessors | Total slack | Resources | Work |
| --- | --- | --- | --- | --- | --- | --- | --- | --- | --- | --- |
| 55 | 7 | **部署** |  | 5d | 2015-10-01 | 2015-10-07 |  |  |  | 40h |
| 56 | 7.1 | 确定最终部署策略 |  | 1d | 2015-10-01 | 2015-10-01 | 54 | 0d | 部署小组 | 8h |
| 57 | 7.2 | 确定部署方法 |  | 1d | 2015-10-02 | 2015-10-02 | 56 | 0d | 部署小组 | 8h |
| 58 | 7.3 | 获得部署所需资源 |  | 1d | 2015-10-05 | 2015-10-05 | 57 | 0d | 部署小组 | 8h |
| 59 | 7.4 | 培训技术支持人员 |  | 1d | 2015-10-06 | 2015-10-06 | 58 | 0d | 部署小组 | 8h |
| 60 | 7.5 | 部署软件 |  | 1d | 2015-10-07 | 2015-10-07 | 59 | 0d | 部署小组 | 8h |
| 61 | 7.6 | 部署工作完成 | milestone | 0d | 2015-10-07 | 2015-10-07 | 60 | 0d |  |  |
